# Krisalida Gestion de Tareas

Schedule from MS Project, 2024-09-01 to 2025-01-31, 3 hours a day, costs in $, A marks actual dates.
O.S.S.I.

## Calendars

- Estándar: Mon-Fri 09:00-13:00, 15:00-19:00; Sat-Sun off.

## Resources

| Resource | Rate | Cost per use |
| --- | --- | --- |
| Project Owner | 4 |  |
| Scrum Master | 18.44 | 18.44 |
| Desarrollador: Kevin Suntaxi | 5 | 5 |
| Desarrollador: Christian Andrango | 5 | 5 |
| Ingeniero de Requisitos | 4.38 | 4.38 |
| Tester | 7.48 | 7.48 |

## Schedule

| ID | WBS | Task | Type | Duration | Start | Finish | Predecessors | Complete | Actual finish | Resources | Work | Actual work | Cost | Actual cost |
| --- | --- | --- | --- | --- | --- | --- | --- | --- | --- | --- | --- | --- | --- | --- |
| 1 | 1 | Ecommerce Krisalida | manual | 234.67d | 2024-09-01 A | 2024-12-31 A |  | 100% |  |  |  |  |  |  |
| 2 | 2 | **Inicio del desarrollo. Establecer el ambiente de desarrollo** |  | 2.67d | 2024-09-02 A | 2024-09-02 A | 1 | 100% |  | Project Owner; Scrum Master | 32h | 32h | 287.96 | 287.96 |
| 3 | 2.1 | Instalacion de herramientas de desarrollo. (git, visual studio code, node, mongodb, etc) | manual | 2.67d | 2024-09-02 A | 2024-09-02 A |  | 100% |  | Desarrollador: Kevin Suntaxi; Desarrollador: Christian Andrango | 16h | 16h | 90 | 90 |
| 4 | 3 | **Diseño de Base de Datos** |  | 13.33d | 2024-09-03 A | 2024-09-09 A | 2 | 100% |  |  | 40h | 40h | 210 | 210 |
| 5 | 3.1 | Diseño del modelo de datos | manual | 10.67d | 2024-09-03 A | 2024-09-06 A |  | 100% |  | Desarrollador: Kevin Suntaxi | 32h | 32h | 165 | 165 |
| 6 | 3.2 | Creación de colecciones | manual | 2.67d | 2024-09-09 A | 2024-09-09 A | 5 | 100% |  | Desarrollador: Kevin Suntaxi | 8h | 8h | 45 | 45 |
| 7 | 4 | **Conexiones** |  | 13.33d | 2024-09-10 A | 2024-09-16 A | 4 | 100% |  |  | 40h | 40h | 205 | 205 |
| 8 | 4.1 | Configuración de la conexión con el servidor de BD | manual | 13.33d | 2024-09-10 A | 2024-09-16 A |  | 100% |  | Desarrollador: Christian Andrango | 40h | 40h | 205 | 205 |
| 9 | 5 | **Desarrollo de APIs** |  | 13.33d | 2024-09-17 A | 2024-09-23 A | 7 | 100% |  |  | 40h | 40h | 210 | 210 |
| 10 | 5.1 | Creación de API para manejo de datos CRUD | manual | 10.67d | 2024-09-17 A | 2024-09-20 A |  | 100% |  | Desarrollador: Kevin Suntaxi | 32h | 32h | 165 | 165 |
| 11 | 5.2 | Implementación de autenticación y autorización | manual | 2.67d | 2024-09-23 A | 2024-09-23 A | 10 | 100% |  | Desarrollador: Kevin Suntaxi | 8h | 8h | 45 | 45 |
| 12 | 6 | **Pruebas** |  | 13.33d | 2024-09-17 A | 2024-09-23 | 9 | 100% | 2024-09-18 |  | 16h | 16h | 134.64 | 134.64 |
| 13 | 6.1 | Pruebas unitarias de funciones de la API | manual | 2.67d | 2024-09-17 A | 2024-09-17 A |  | 100% |  | Tester | 8h | 8h | 67.32 | 67.32 |
| 14 | 6.2 | Pruebas de integración entre API y base de datos | manual | 2.67d | 2024-09-18 A | 2024-09-18 A | 13 | 100% |  | Tester | 8h | 8h | 67.32 | 67.32 |
| 15 | 7 | **Diseño de Interfaz** |  | 13.33d | 2024-09-24 A | 2024-09-30 A | 12 | 100% |  |  | 40h | 40h | 210 | 210 |
| 16 | 7.1 | Creación de prototipos con herramientas de diseño | manual | 5.33d | 2024-09-24 A | 2024-09-25 A |  | 100% |  | Desarrollador: Christian Andrango | 16h | 16h | 85 | 85 |
| 17 | 7.2 | Implementación de layouts con React | manual | 8d | 2024-09-26 A | 2024-09-30 A | 16 | 100% |  | Desarrollador: Christian Andrango | 24h | 24h | 125 | 125 |
| 18 | 8 | **Desarrollo de Componentes** |  | 13.33d | 2024-10-01 A | 2024-10-07 A | 15 | 100% |  |  | 40h | 40h | 215 | 215 |
| 19 | 8.1 | Desarrollo de componentes básicos (botones, formularios, etc.) | manual | 8d | 2024-10-01 A | 2024-10-03 A |  | 100% |  | Desarrollador: Christian Andrango | 24h | 24h | 125 | 125 |
| 20 | 8.2 | Implementación de la navegación y enrutamiento | manual | 2.67d | 2024-10-04 A | 2024-10-04 A | 19 | 100% |  | Desarrollador: Christian Andrango | 8h | 8h | 45 | 45 |
| 21 | 8.3 | Integración de librerías de UI | manual | 2.67d | 2024-10-07 A | 2024-10-07 A | 20 | 100% |  | Desarrollador: Christian Andrango | 8h | 8h | 45 | 45 |
| 22 | 9 | **Integración con APIs** |  | 13.33d | 2024-10-08 A | 2024-10-14 A | 18 | 100% |  |  | 48h | 48h | 277.32 | 277.32 |
| 23 | 9.1 | Consumo de APIs para mostrar datos en la interfaz | manual | 8d | 2024-10-08 A | 2024-10-10 A |  | 100% |  | Desarrollador: Kevin Suntaxi | 24h | 24h | 125 | 125 |
| 24 | 9.2 | Implementación de validaciones y manejo de errores | manual | 5.33d | 2024-10-11 A | 2024-10-12 A | 23 | 100% |  | Desarrollador: Kevin Suntaxi | 16h | 16h | 85 | 85 |
| 25 | 9.3 | Pruebas de funcionalidad de interacción con las APIs | manual | 2.67d | 2024-10-14 A | 2024-10-14 A | 24 | 100% |  | Tester | 8h | 8h | 67.32 | 67.32 |

| ID | WBS | Task | Type | Duration | Start | Finish | Predecessors | Complete | Remaining | Actual start | Actual finish | Resources | Work | Actual work | Cost | Actual cost |
| --- | --- | --- | --- | --- | --- | --- | --- | --- | --- | --- | --- | --- | --- | --- | --- | --- |
| 26 | 10 | **Optimización** |  | 13.33d | 2024-10-15 A | 2024-10-21 A | 22 | 100% |  |  |  |  | 40h | 40h | 205 | 205 |
| 27 | 10.1 | Mejoras de responsividad | manual | 13.33d | 2024-10-15 A | 2024-10-21 A |  | 100% |  |  |  | Desarrollador: Christian Andrango | 40h | 40h | 205 | 205 |
| 28 | 11 | **Pruebas** |  | 13.33d | 2024-10-15 A | 2024-10-21 A | 26 | 100% |  |  |  |  | 40h | 40h | 306.68 | 306.68 |
| 29 | 11.1 | Pruebas de interfaz (UI testing, compatibilidad en diferentes navegadores) | manual | 13.33d | 2024-10-15 A | 2024-10-21 A |  | 100% |  |  |  | Tester | 40h | 40h | 306.68 | 306.68 |
| 30 | 12 | **Diseño del Agente Inteligente** |  | 2.67d | 2024-10-23 A | 2024-10-23 A | 28 | 100% |  |  |  |  | 8h | 8h | 45 | 45 |
| 31 | 12.1 | Definición de requerimientos y funcionalidades del agente | manual | 2.67d | 2024-10-23 A | 2024-10-23 A |  | 100% |  |  |  | Desarrollador: Kevin Suntaxi | 8h | 8h | 45 | 45 |
| 32 | 13 | **Integración con OpenAI API** |  | 13.33d | 2024-10-24 A | 2024-10-30 A | 30 | 100% |  |  |  |  | 40h | 40h | 237.32 | 237.32 |
| 33 | 13.1 | Configuración de cuenta y acceso a OpenAI API | manual | 5.33d | 2024-10-24 A | 2024-10-25 A |  | 100% |  |  |  | Desarrollador: Kevin Suntaxi | 16h | 16h | 85 | 85 |
| 34 | 13.2 | Implementación de la integración con la API de OpenAI | manual | 5.33d | 2024-10-28 A | 2024-10-29 A | 33 | 100% |  |  |  | Desarrollador: Kevin Suntaxi | 16h | 16h | 85 | 85 |
| 35 | 13.3 | Pruebas iniciales de llamadas a la API | manual | 2.67d | 2024-10-30 A | 2024-10-30 A | 34 | 100% |  |  |  | Tester | 8h | 8h | 67.32 | 67.32 |
| 36 | 14 | **Desarrollo de Lógica del Agente** |  | 21.33d | 2025-01-01 A | 2025-01-10 | 32 | 86% | 3.05d |  |  |  | 56h | 48h | 290 | 250 |
| 37 | 14.1 | Implementación de procesamiento de lenguaje natural | manual | 8d | 2025-01-01 A | 2025-01-03 A |  | 100% |  |  |  | Desarrollador: Christian Andrango | 24h | 24h | 125 | 125 |
| 38 | 14.2 | Manejo de contexto y memoria conversacional | manual | 10.67d | 2025-01-07 A | 2025-01-10 |  | 75% | 2.67d |  |  | Desarrollador: Christian Andrango | 32h | 24h | 165 | 125 |
| 39 | 15 | **Entrenamiento y Ajustes** |  | 13.33d | 2025-01-13 | 2025-01-17 A | 36 | 100% |  | 2025-01-14 |  |  | 32h | 32h | 175 | 175 |
| 40 | 15.1 | Ajuste de prompts y parámetros de la API para optimizar el desempeño | manual | 5.33d | 2025-01-14 A | 2025-01-15 A |  | 100% |  |  |  | Desarrollador: Kevin Suntaxi | 16h | 16h | 85 | 85 |
| 41 | 15.2 | Revisión de casos de uso y respuestas para mejorar precisión y relevancia | manual | 5.33d | 2025-01-16 A | 2025-01-17 A | 40 | 100% |  |  |  | Desarrollador: Kevin Suntaxi; Desarrollador: Christian Andrango | 16h | 16h | 90 | 90 |
| 42 | 16 | **Implementación** |  | 13.33d | 2025-01-20 A | 2025-01-24 | 39 | 100% |  |  | 2025-01-23 |  | 48h | 48h | 255 | 255 |
| 43 | 16.1 | Despliegue del agente en el entorno de desarrollo | manual | 5.33d | 2025-01-20 A | 2025-01-21 A |  | 100% |  |  |  | Desarrollador: Christian Andrango; Desarrollador: Kevin Suntaxi | 32h | 32h | 170 | 170 |
| 44 | 16.2 | Integración con interfaces de usuario | manual | 5.33d | 2025-01-22 A | 2025-01-23 A | 43 | 100% |  |  |  | Desarrollador: Christian Andrango | 16h | 16h | 85 | 85 |
| 45 | 17 | **Pruebas y Optimización** |  | 13.33d | 2025-01-27 A | 2025-01-31 | 42 | 80% | 2.67d |  |  |  | 40h | 32h | 252.16 | 212.16 |
| 46 | 17.1 | Pruebas de interacción con usuarios | manual | 5.33d | 2025-01-27 A | 2025-01-28 A |  | 100% |  |  |  | Tester | 16h | 16h | 127.16 | 127.16 |
| 47 | 17.2 | Optimización de respuestas basadas en feedback | manual | 8d | 2025-01-29 A | 2025-01-31 | 46 | 67% | 2.67d |  |  | Desarrollador: Christian Andrango | 24h | 16h | 125 | 85 |
